# AFF24-09_0009 planning S15 draft

Schedule from MS Project, 2025-03-17 to 2025-06-16, 7 hours a day.

## Calendars

- Standard: Mon-Fri 09:00-12:00, 14:00-18:00; Sat-Sun off.

## Schedule

| ID | Task | Type | Duration | Start | Finish | Predecessors | Total slack | Free slack |
| --- | --- | --- | --- | --- | --- | --- | --- | --- |
| 1 | prise de cotes | manual | 1d | 2025-03-17 | 2025-03-17 |  |  |  |
| 2 | scan 3D | manual | 1d | 2025-03-24 | 2025-03-24 |  |  |  |
| 3 | 3D de concept | manual | 2d | 2025-04-11 | 2025-04-14 | 1, 2 |  |  |
| 4 | revue interne 3D de concept | milestone, manual | 1d | 2025-04-22 | 2025-04-22 | 3 |  |  |
| 5 | enclenchement et prés 3D de concept au CEA | milestone | 1d | 2025-04-23 | 2025-04-23 | 4 | 5d | 0d |
| 6 | reprises 3D et 3D de détail |  | 1d | 2025-04-24 | 2025-04-24 | 5 | 5d | 3d |
| 7 | note de calcul |  | 2d | 2025-04-23 | 2025-04-24 | 4 | 37d |  |
| 8 | revue de conception avec le CEA | milestone, manual | 1d | 2025-04-30 | 2025-04-30 | 6 |  |  |
| 9 | mise en plans |  | 2d | 2025-05-01 | 2025-05-02 | 8 | 2d |  |
| 10 | revue de définition avec le CEA | milestone, manual | 1d | 2025-05-07 | 2025-05-07 | 9 |  |  |
| 11 | BPE ETUDES CEA |  | 5d | 2025-05-08 | 2025-05-14 | 10 | 0d |  |
| 12 | SCA |  | 2d | 2025-05-15 | 2025-05-16 | 11 | 0d |  |
| 13 | LOFC |  | 2d | 2025-05-15 | 2025-05-16 | 11 | 10d |  |
| 14 | appro des tubes |  | 10d | 2025-05-19 | 2025-05-30 | 12 | 0d |  |
| 15 | appro des tôles alu |  | 10d | 2025-05-19 | 2025-05-30 | 12 | 7d |  |
| 16 | appro des plaques de plexiglas |  | 10d | 2025-05-19 | 2025-05-30 | 12 | 7d |  |
| 17 | fabrication structure |  | 3d | 2025-06-02 | 2025-06-04 | 14, 13 | 0d |  |
| 18 | PV dimensionnel |  | 1d | 2025-06-05 | 2025-06-05 | 17 | 0d |  |
| 19 | passivation des soudures par électrolyse |  | 3d | 2025-06-06 | 2025-06-10 | 18 | 0d |  |
| 20 | montage des tôles, des plaques et assemblage de la porte |  | 3d | 2025-06-11 | 2025-06-13 | 19, 15, 16 | 0d |  |
| 21 | réception atelier avec le CEA | milestone | 1d | 2025-06-16 | 2025-06-16 | 20 | 0d |  |
